# v1.3

How a schedule from MS Project changed from version to version. A marks actual dates.

## Version 1 (saved 2008-09-11, file SETI - project v1.3.mpp)

| ID | WBS | Task | Duration | Start | Finish | Predecessors | Total float | Constraint |
| --- | --- | --- | --- | --- | --- | --- | --- | --- |
| 1 | 1 | **Cronograma Proyeto SETI** | 354.33d | 2008-09-01 | 2009-05-06 |  | 0d |  |
| 2 | 1.1 | **Relevamiento** | 19d | 2008-09-01 | 2008-09-12 |  | 0d |  |
| 3 |  | Relevamiento - Entrevistas | 2d | 2008-09-01 | 2008-09-01 |  | 0d | start no earlier than 2008-09-01 |
| 4 | 1.1.2 | **Documentación Inicial** | 17d | 2008-09-02 | 2008-09-12 |  | 0d |  |
| 5 |  | Documentación Inicial - Desarrollo | 16d | 2008-09-02 | 2008-09-11 | 3 | 0d |  |
| 6 |  | Documentación Inicial - Integración | 2d | 2008-09-12 | 2008-09-12 | 5 | 0d |  |
| 7 |  | Documentacion Inicial - Entrega | 0d | 2008-09-12 | 2008-09-12 | 6 | 0d |  |
| 8 | 1.2 | **Análisis** | 48d | 2008-09-15 | 2008-10-16 | 4 | 0d |  |
| 9 | 1.2.1 | **Casos de Uso de Negocio** | 16d | 2008-09-15 | 2008-09-24 |  | 0d |  |
| 10 |  | C.U.Negocio - Clientes | 2d | 2008-09-15 | 2008-09-15 |  | 18d |  |
| 11 |  | C.U.Negocio - Proveedores | 2d | 2008-09-15 | 2008-09-15 |  | 0d |  |
| 12 |  | C.U.Negocio - Insumos | 2d | 2008-09-15 | 2008-09-15 |  | 20d |  |
| 13 |  | C.U.Negocio - Seguridad | 6d | 2008-09-16 | 2008-09-18 | 11 | 0d |  |
| 14 |  | C.U.Negocio - Personal Técnico | 2d | 2008-09-16 | 2008-09-16 | 11 | 18d |  |
| 15 |  | C.U.Negocio - Gestión Tickets | 8d | 2008-09-19 | 2008-09-24 | 13 | 0d |  |
| 16 |  | C.U.Negocio - Alertas | 2d | 2008-09-19 | 2008-09-19 | 13 | 8d |  |
| 17 | 1.2.2 | **Casos de Uso de Sistema** | 22d | 2008-09-16 | 2008-09-30 |  | 0d |  |
| 18 |  | C.U.Sistema - Clientes | 2d | 2008-09-16 | 2008-09-16 | 10 | 18d |  |
| 19 |  | C.U.Sistema - Proveedores | 2d | 2008-09-16 | 2008-09-16 | 11 | 4d |  |
| 20 |  | C.U.Sistema - Insumos | 2d | 2008-09-17 | 2008-09-17 | 12, 18 | 18d |  |
| 21 |  | C.U.Sistema - Seguridad | 8d | 2008-09-19 | 2008-09-24 | 19, 13 | 0d |  |
| 22 |  | C.U.Sistema - Personal Técnico | 2d | 2008-09-17 | 2008-09-17 | 19, 14 | 18d |  |
| 23 |  | C.U.Sistema - Gestión Tickets | 8d | 2008-09-25 | 2008-09-30 | 21, 15 | 0d |  |
| 24 |  | C.U.Sistema - Alertas | 6d | 2008-09-25 | 2008-09-29 | 21, 16 | 2d |  |
| 25 | 1.2.3 | **Modelo de Análisis** | 4d | 2008-10-01 | 2008-10-02 | 17 | 0d |  |
| 26 |  | Modelo de Análisis - Integración Documentación | 4d | 2008-10-01 | 2008-10-02 |  | 0d |  |
| 27 |  | Modelo de Análisis - Entrega | 0d | 2008-10-02 | 2008-10-02 | 26 | 0d |  |
| 28 | 1.2.4 | **Modelo de Testing** | 20d | 2008-10-03 | 2008-10-16 | 25 | 0d |  |
| 29 |  | Mod.Testing - Clientes | 2d | 2008-10-03 | 2008-10-03 |  | 0d |  |
| 30 |  | Mod.Testing - Proveedores | 2d | 2008-10-06 | 2008-10-06 | 29 | 0d |  |
| 31 |  | Mod.Testing - Insumos | 2d | 2008-10-06 | 2008-10-06 | 29 | 16d |  |
| 32 |  | Mod.Testing - Seguridad | 6d | 2008-10-07 | 2008-10-09 | 30 | 0d |  |
| 33 |  | Mod.Testing - Personal Técnico | 2d | 2008-10-07 | 2008-10-07 | 30 | 14d |  |
| 34 |  | Mod.Testing - Gestión Tickets | 6d | 2008-10-10 | 2008-10-14 | 32 | 4d |  |
| 35 |  | Mod.Testing - Alertas | 6d | 2008-10-10 | 2008-10-14 | 32 | 0d |  |
| 36 |  | Mod.Testing - Integración Documentación | 4d | 2008-10-15 | 2008-10-16 | 35 | 0d |  |
| 37 |  | Mod.Testing - Entrega | 0d | 2008-10-16 | 2008-10-16 | 36 | 0d |  |
| 38 | 1.3 | **Diseño** | 30d | 2008-10-17 | 2008-11-06 | 28 | 0d |  |
| 39 |  | Diseño - Diagrama de Clases | 6d | 2008-10-17 | 2008-10-21 |  | 0d |  |
| 40 |  | Diseño - Diagrama de Interacción | 6d | 2008-10-22 | 2008-10-24 | 39 | 0d |  |
| 41 |  | Diseño - Diagrama de Secuencia | 6d | 2008-10-27 | 2008-10-29 | 40 | 0d |  |
| 42 |  | Diseño - Diagrama de Entidad Relación | 6d | 2008-10-30 | 2008-11-03 | 41 | 0d |  |
| 43 |  | Diseño - Integración Documentación | 6d | 2008-11-04 | 2008-11-06 | 42 | 0d |  |
| 44 |  | Diseño - Entrega | 0d | 2008-11-06 | 2008-11-06 | 43 | 0d | finish no earlier than 2008-10-02 |
| 45 |  | Revisión de Entregas Realizadas | 30d | 2008-11-07 | 2008-11-27 | 2, 8, 38 | 0d |  |
| 46 |  | Aprobación de la Cursada | 0d | 2008-11-27 | 2008-11-27 | 45 | 154d |  |
| 47 | 1.6 | **Desarrollo** | 191.33d | 2008-11-28 | 2009-04-10 | 45 | 0d |  |
| 48 | 1.6.1 | **Construcción Base de Datos** | 23.33d | 2008-11-28 | 2008-12-15 |  | 0d |  |
| 49 |  | Generación Tablas | 13.33d | 2008-11-28 | 2008-12-08 |  | 0d |  |
| 50 |  | Poblado y Resguardo | 10d | 2008-12-08 | 2008-12-15 | 49 | 0d |  |
| 51 | 1.6.2 | **Módulo Clientes** | 10d | 2008-12-15 | 2008-12-22 | 48 | 0d |  |
| 52 |  | Clientes - Alta | 2d | 2008-12-15 | 2008-12-16 |  | 0d |  |
| 53 |  | Clientes - Baja | 2d | 2008-12-16 | 2008-12-17 | 52 | 0d |  |
| 54 |  | Clientes - Modificación | 2d | 2008-12-17 | 2008-12-18 | 53 | 0d |  |
| 55 |  | Clientes - Consulta | 2d | 2008-12-18 | 2008-12-19 | 54 | 0d |  |
| 56 |  | Clientes - Prueba Unitaria | 2d | 2008-12-19 | 2008-12-22 | 55 | 0d |  |
| 57 | 1.6.3 | **Módulo Proveedores** | 10d | 2008-12-22 | 2008-12-29 | 51 | 0d |  |
| 58 |  | Proveedores - Alta | 2d | 2008-12-22 | 2008-12-23 |  | 0d |  |
| 59 |  | Proveedores - Baja | 2d | 2008-12-23 | 2008-12-24 | 58 | 0d |  |
| 60 |  | Proveedores - Modificación | 2d | 2008-12-24 | 2008-12-25 | 59 | 0d |  |
| 61 |  | Proveedores - Consulta | 2d | 2008-12-25 | 2008-12-26 | 60 | 0d |  |
| 62 |  | Proveedores - Prueba Unitaria | 2d | 2008-12-26 | 2008-12-29 | 61 | 0d |  |
| 63 | 1.6.4 | **Módulo Insumos** | 10d | 2008-12-29 | 2009-01-05 | 57 | 0d |  |
| 64 |  | Insumos - Alta | 2d | 2008-12-29 | 2008-12-30 |  | 0d |  |
| 65 |  | Insumos - Baja | 2d | 2008-12-30 | 2008-12-31 | 64 | 0d |  |
| 66 |  | Insumos - Modificación | 2d | 2008-12-31 | 2009-01-01 | 65 | 0d |  |
| 67 |  | Insumos - Consulta | 2d | 2009-01-01 | 2009-01-02 | 66 | 0d |  |
| 68 |  | Insumos - Prueba Unitaria | 2d | 2009-01-02 | 2009-01-05 | 67 | 0d |  |
| 69 | 1.6.5 | **Módulo Seguridad** | 30d | 2009-01-05 | 2009-01-26 | 63 | 0d |  |
| 70 | 1.6.5.1 | **Submódulo Usuarios** | 10d | 2009-01-05 | 2009-01-12 |  | 0d |  |

| ID | WBS | Task | Duration | Start | Finish | Predecessors | Total float |
| --- | --- | --- | --- | --- | --- | --- | --- |
| 71 |  | Usuarios - Alta | 2d | 2009-01-05 | 2009-01-06 |  | 0d |
| 72 |  | Usuarios - Baja | 2d | 2009-01-06 | 2009-01-07 | 71 | 0d |
| 73 |  | Usuarios - Modificación | 2d | 2009-01-07 | 2009-01-08 | 72 | 0d |
| 74 |  | Usuarios - Consulta | 2d | 2009-01-08 | 2009-01-09 | 73 | 0d |
| 75 |  | Usuarios - Prueba Unitaria | 2d | 2009-01-09 | 2009-01-12 | 74 | 0d |
| 76 | 1.6.5.2 | **Submódulo Perfiles** | 10d | 2009-01-12 | 2009-01-19 | 70 | 0d |
| 77 |  | Perfiles - Alta | 2d | 2009-01-12 | 2009-01-13 |  | 0d |
| 78 |  | Perfiles - Baja | 2d | 2009-01-13 | 2009-01-14 | 77 | 0d |
| 79 |  | Perfiles - Modificación | 2d | 2009-01-14 | 2009-01-15 | 78 | 0d |
| 80 |  | Perfiles - Consulta | 2d | 2009-01-15 | 2009-01-16 | 79 | 0d |
| 81 |  | Perfiles - Prueba Unitaria | 2d | 2009-01-16 | 2009-01-19 | 80 | 0d |
| 82 | 1.6.5.3 | **Submódulo Gestión de Seguridad** | 10d | 2009-01-19 | 2009-01-26 | 76 | 0d |
| 83 |  | Gestión Seguridad - Consulta | 4d | 2009-01-19 | 2009-01-21 |  | 0d |
| 84 |  | Gestión de Seguridad - Asignación a Perfiles | 6d | 2009-01-21 | 2009-01-26 | 83 | 0d |
| 85 | 1.6.6 | **Módulo Personal Técnico** | 10d | 2009-01-26 | 2009-02-02 | 69 | 0d |
| 86 |  | Personal Técnico - Alta | 2d | 2009-01-26 | 2009-01-27 |  | 0d |
| 87 |  | Personal Técnico - Baja | 2d | 2009-01-27 | 2009-01-28 | 86 | 0d |
| 88 |  | Personal Técnico - Modificación | 2d | 2009-01-28 | 2009-01-29 | 87 | 0d |
| 89 |  | Personal Técnico - Consulta | 2d | 2009-01-29 | 2009-01-30 | 88 | 0d |
| 90 |  | Personal Técnico - Prueba Unitaria | 2d | 2009-01-30 | 2009-02-02 | 89 | 0d |
| 91 | 1.6.7 | **Módulo Gestión de Tickets** | 42d | 2009-02-02 | 2009-03-03 | 85 | 0d |
| 92 | 1.6.7.1 | **Alta** | 24d | 2009-02-02 | 2009-02-18 |  | 0d |
| 93 |  | Alta - Generación de Presupuesto | 10d | 2009-02-02 | 2009-02-09 |  | 0d |
| 94 |  | Alta - Asignación a Técnico | 4d | 2009-02-09 | 2009-02-11 | 93 | 0d |
| 95 |  | Alta - Asignación de Estados | 10d | 2009-02-11 | 2009-02-18 | 94 | 0d |
| 96 | 1.6.7.2 | **Modificación** | 8d | 2009-02-18 | 2009-02-24 | 92 | 0d |
| 97 |  | Modificación - Presupuesto | 4d | 2009-02-18 | 2009-02-20 |  | 0d |
| 98 |  | Modificación - Asignación a Técnico | 2d | 2009-02-20 | 2009-02-23 | 97 | 0d |
| 99 |  | Modificación - Estados | 2d | 2009-02-23 | 2009-02-24 | 98 | 0d |
| 100 |  | Gestión de Tickets - Consulta | 4d | 2009-02-24 | 2009-02-26 | 99 | 0d |
| 101 |  | Gestión de Tickets - Prueba Unitaria | 6d | 2009-02-26 | 2009-03-03 | 100 | 0d |
| 102 | 1.6.8 | **Módulo Alertas** | 26d | 2009-03-03 | 2009-03-20 | 91 | 0d |
| 103 |  | Módulo Alertas - Configuración | 10d | 2009-03-03 | 2009-03-10 |  | 0d |
| 104 |  | Módulo Alertas - Proceso Batch | 10d | 2009-03-10 | 2009-03-17 | 103 | 0d |
| 105 |  | Módulo Alertas - Prueba Unitaria | 6d | 2009-03-17 | 2009-03-20 | 104 | 0d |
| 106 | 1.6.9 | **Módulo Reportes** | 30d | 2009-03-20 | 2009-04-10 | 102 | 0d |
| 107 |  | Módulo Reportes - Desarrollo | 20d | 2009-03-20 | 2009-04-03 |  | 0d |
| 108 |  | Módulo Reportes - Prueba Unitaria | 10d | 2009-04-03 | 2009-04-10 | 107 | 0d |
| 109 |  | Integración | 10d | 2009-04-10 | 2009-04-17 | 91, 102, 106 | 0d |
| 110 |  | Pruebas de Integración | 20d | 2009-04-17 | 2009-05-01 | 109 | 0d |
| 111 |  | Implementación | 6d | 2009-05-01 | 2009-05-06 | 110 | 0d |

## Version 2 (saved 2009-05-14, file SETI - project v2.0.mpp)

Last finish 2009-05-06 → 2009-05-12 (+6d). Complete tasks 0 → 36.

Added:

| ID | Task | Duration | Start | Finish | Predecessors | Resources |
| --- | --- | --- | --- | --- | --- | --- |
| 42 | Submódulo Usuarios | 2d? | 2009-01-16 A | 2009-01-19 A | 74 | Analista 1 |
| 43 | Submódulo Perfiles | 2d? | 2009-01-22 A | 2009-01-23 A | 80 | Analista 1 |
| 44 | Gestión de Seguridad - Integración | 2d? | 2009-02-03 A | 2009-02-04 A | 87 | Analista 1 |
| 88 | Gestión de Seguridad - Prueba de integración | 1d? | 2009-02-04 | 2009-02-05 | 44 |  |
| 115 | **Armar producto** | 20d | 2009-04-16 | 2009-04-30 | 113 |  |
| 116 | Instalador | 10d | 2009-04-16 | 2009-04-23 |  | Desarrollador 1 |
| 117 | Manual de instalación | 10d | 2009-04-23 | 2009-04-30 | 116 | Desarrollador 1 |
| 118 | Packaging | 20d | 2009-04-16 | 2009-04-30 |  | Analista 1 [50%]; Analista 2 [50%] |
| 119 | Manual de usuario | 20d | 2009-04-16 | 2009-04-30 |  | Analista 3 [50%]; Analista 4 [50%] |
| 120 | Producto Terminado - Entregable | 1d? | 2009-04-30 | 2009-04-30 | 118 |  |
| 121 | Capacitación | 1d? | 2009-04-30 | 2009-05-01 | 120 | Lider Proyecto; Analista 1 [50%]; Analista 2 [50%]; Analista 3 [50%]; Analista 4 [50%] |

Changed:

| ID | Task | Start | Finish | Duration | Complete | Total float | Predecessors | Other |
| --- | --- | --- | --- | --- | --- | --- | --- | --- |
| 1 | **Cronograma Proyeto SETI** | 2008-09-01 A | 2009-05-06 → 2009-05-12 (+6d) | 354.33d → 360.92d? | 0% → 56% |  |  | resources none → Lider Proyecto [15%] |
| 2 | **Relevamiento** | 2008-09-01 A | 2008-09-12 A | 19d → 18.75d | 0% → 100% | 0d → none |  |  |
| 3 | Relevamiento - Entrevistas | 2008-09-01 A | 2008-09-01 A |  | 0% → 100% | 0d → none |  |  |
| 4 | **Documentación Inicial** | 2008-09-02 A | 2008-09-12 A | 17d → 16.75d | 0% → 100% | 0d → none |  |  |
| 5 | Documentación Inicial - Desarrollo | 2008-09-02 A | 2008-09-11 A |  | 0% → 100% | 0d → none |  |  |
| 6 | Documentación Inicial - Integración | 2008-09-12 A | 2008-09-12 A |  | 0% → 100% | 0d → none |  |  |
| 7 | Documentacion Inicial - Entrega | 2008-09-12 A | 2008-09-12 A |  | 0% → 100% | 0d → none |  |  |
| 8 | **Análisis** | 2008-09-15 A | 2008-10-16 → 2008-10-30 A (+14d) | 48d → 67.55d | 0% → 100% | 0d → none |  |  |
| 9 | **Casos de Uso de Negocio** | 2008-09-15 A | 2008-09-24 → 2008-10-01 A (+7d) | 16d → 25.75d | 0% → 100% | 0d → none |  |  |
| 10 | C.U.Negocio - Clientes | 2008-09-15 A | 2008-09-15 A |  | 0% → 100% | 18d → none |  |  |
| 11 | C.U.Negocio - Proveedores | 2008-09-15 A | 2008-09-15 A |  | 0% → 100% | 0d → none |  |  |
| 12 | C.U.Negocio - Insumos | 2008-09-15 A | 2008-09-15 A |  | 0% → 100% | 20d → none |  |  |
| 13 | C.U.Negocio - Seguridad | 2008-09-16 A | 2008-09-18 → 2008-09-23 A (+5d) | 6d → 12d | 0% → 100% | 0d → none |  |  |
| 14 | C.U.Negocio - Personal Técnico | 2008-09-16 A | 2008-09-16 A |  | 0% → 100% | 18d → none |  |  |
| 15 | C.U.Negocio - Gestión Tickets | 2008-09-19 → 2008-09-24 A (+5d) | 2008-09-24 → 2008-10-01 A (+7d) | 8d → 12d | 0% → 100% | 0d → none |  |  |
| 16 | C.U.Negocio - Alertas | 2008-09-19 → 2008-09-24 A (+5d) | 2008-09-19 → 2008-09-26 A (+7d) | 2d → 6d | 0% → 100% | 8d → none |  |  |
| 17 | **Casos de Uso de Sistema** | 2008-09-16 A | 2008-09-30 → 2008-10-09 A (+9d) | 22d → 35.75d | 0% → 100% | 0d → none |  |  |
| 18 | Módulo Clientes | 2008-09-16 A | 2008-09-16 A |  | 0% → 100% | 18d → none |  | was named C.U.Sistema - Clientes |
| 19 | Módulo Proveedores | 2008-09-16 A | 2008-09-16 A |  | 0% → 100% | 4d → none |  | was named C.U.Sistema - Proveedores |
| 20 | Módulo Insumos | 2008-09-17 A | 2008-09-17 A |  | 0% → 100% | 18d → none |  | was named C.U.Sistema - Insumos |
| 21 | Módulo Seguridad | 2008-09-19 → 2008-09-24 A (+5d) | 2008-09-24 → 2008-10-01 A (+7d) | 8d → 12d | 0% → 100% | 0d → none |  | was named C.U.Sistema - Seguridad |
| 22 | Módulo Personal Técnico | 2008-09-17 A | 2008-09-17 A |  | 0% → 100% | 18d → none |  | was named C.U.Sistema - Personal Técnico |
| 23 | Módulo Gestión Tickets | 2008-09-25 → 2008-10-02 A (+7d) | 2008-09-30 → 2008-10-09 A (+9d) | 8d → 12d | 0% → 100% | 0d → none |  | was named C.U.Sistema - Gestión Tickets |
| 24 | Módulo Alertas | 2008-09-25 → 2008-10-02 A (+7d) | 2008-09-29 → 2008-10-06 A (+7d) |  | 0% → 100% | 2d → none |  | was named C.U.Sistema - Alertas |
| 25 | **Modelo de Análisis** | 2008-10-01 → 2008-10-10 A (+9d) | 2008-10-02 → 2008-10-30 A (+28d) | 4d → 29.55d | 0% → 100% | 0d → none |  |  |
| 26 | Modelo de Análisis - Integración Documentación | 2008-10-01 → 2008-10-10 A (+9d) | 2008-10-02 → 2008-10-30 A (+28d) | 4d → 29.3d | 0% → 100% | 0d → none |  | resources Lider Proyecto → Lider Proyecto [25%]; Analista 1 [75%] |
| 27 | Modelo de Análisis - Entrega | 2008-10-02 → 2008-10-30 A (+28d) | 2008-10-02 → 2008-10-30 A (+28d) |  | 0% → 100% | 0d → none |  |  |
| 28 | **Diseño** | 2008-10-17 → 2008-10-30 A (+13d) | 2008-11-06 → 2008-11-20 A (+14d) | 30d → 28.45d | 0% → 100% | 0d → none | 37 → 8 |  |
| 29 | Diseño - Diagrama de Clases | 2008-10-17 → 2008-10-30 A (+13d) | 2008-10-21 → 2008-11-04 A (+14d) |  | 0% → 100% | 0d → none |  |  |
| 30 | Diseño - Diagrama de Interacción | 2008-10-22 → 2008-11-04 A (+13d) | 2008-10-24 → 2008-11-07 A (+14d) |  | 0% → 100% | 0d → none |  |  |
| 31 | Diseño - Diagrama de Secuencia | 2008-10-27 → 2008-11-07 A (+11d) | 2008-10-29 → 2008-11-12 A (+14d) |  | 0% → 100% | 0d → none |  |  |
| 32 | Diseño - Diagrama de Entidad Relación | 2008-10-30 → 2008-11-12 A (+13d) | 2008-11-03 → 2008-11-17 A (+14d) |  | 0% → 100% | 0d → none |  |  |
| 33 | Diseño - Integración Documentación | 2008-11-04 → 2008-11-17 A (+13d) | 2008-11-06 → 2008-11-19 A (+13d) | 6d → 4d | 0% → 100% | 0d → none |  | resources Lider Proyecto → Lider Proyecto [25%]; Analista 3 [75%] |
| 34 | Diseño - Entrega | 2008-11-06 → 2008-11-20 A (+14d) | 2008-11-06 → 2008-11-20 A (+14d) |  | 0% → 100% | 0d → none |  | constraint finish no earlier than 2008-10-02 → start no earlier than 2008-11-20 |
| 35 | Revisión de Entregas Realizadas | 2008-11-07 → 2008-11-20 A (+13d) | 2008-11-27 → 2008-12-10 A (+13d) |  | 0% → 100% | 0d → none |  |  |
| 36 | Aprobación de la Cursada | 2008-11-27 → 2008-12-10 A (+13d) | 2008-11-27 → 2008-12-10 A (+13d) |  | 0% → 100% | 154d → none |  |  |
| 37 | **Modelo de Testing** | 2008-10-03 → 2008-12-29 A (+87d) | 2008-10-16 → 2009-03-23 (+158d) | 20d → 118.75d? | 0% → 80% | 0d → 71.58d | 25 → 36 |  |
| 38 | Mod.Testing - Clientes | 2008-10-03 → 2008-12-29 A (+87d) | 2008-10-03 → 2008-12-30 A (+88d) |  | 0% → 100% | 0d → none | none → 55 |  |
| 39 | Mod.Testing - Proveedores | 2008-10-06 → 2009-01-02 A (+88d) | 2008-10-06 → 2009-01-05 A (+91d) |  | 0% → 100% | 0d → none | 38 → 61 |  |
| 40 | Mod.Testing - Insumos | 2008-10-06 → 2009-01-13 A (+99d) | 2008-10-06 → 2009-01-14 (+100d) | 2d → 1.75d | 0% → 57% | 16d → 36.9d | 38 → 70 |  |
| 41 | **Mod.Testing - Seguridad** | 2008-10-07 → 2009-01-16 A (+101d) | 2008-10-09 → 2009-02-04 A (+118d) | 6d → 26d? | 0% → 100% | 0d → none |  | resources Analista 1 → none |
| 45 | Mod.Testing - Personal Técnico | 2008-10-07 → 2009-02-06 A (+122d) | 2008-10-07 → 2009-02-09 A (+125d) |  | 0% → 100% | 14d → none | 39 → 90 |  |
| 46 | Mod.Testing - Gestión Tickets | 2008-10-10 → 2009-02-27 A (+140d) | 2008-10-14 → 2009-03-04 (+141d) | 6d → 6.25d | 0% → 48% | 4d → 17.58d | 41 → 96 |  |
| 47 | Mod.Testing - Alertas | 2008-10-10 → 2009-03-16 A (+157d) | 2008-10-14 → 2009-03-19 A (+156d) |  | 0% → 100% | 0d → none | 41 → 107 |  |
| 48 | Mod.Testing - Integración Documentación | 2008-10-15 → 2009-03-19 A (+155d) | 2008-10-16 → 2009-03-23 (+158d) |  | 0% → 50% | 0d → 71.58d |  | resources Lider Proyecto → Lider Proyecto [25%]; Analista 2 [75%] |
| 49 | Mod.Testing - Entrega | 2008-10-16 → 2009-03-23 (+158d) | 2008-10-16 → 2009-03-23 (+158d) |  |  | 0d → 71.58d |  |  |
| 50 | **Desarrollo** | 2008-11-28 → 2008-12-11 A (+13d) | 2009-04-10 → 2009-04-09 (-1d) | 191.33d → 170.58d? | 0% → 41% |  | 35 → 36 |  |
| 51 | **Construcción Base de Datos** | 2008-11-28 → 2008-12-11 A (+13d) | 2008-12-15 → 2008-12-26 (+11d) |  | 0% → 79% | 0d → 57.13d |  |  |
| 52 | Generación Tablas | 2008-11-28 → 2008-12-11 A (+13d) | 2008-12-08 → 2008-12-19 A (+11d) |  | 0% → 100% | 0d → none |  |  |
| 53 | Poblado y Resguardo | 2008-12-08 → 2008-12-19 A (+11d) | 2008-12-15 → 2008-12-26 (+11d) | 10d → 9.75d | 0% → 51% | 0d → 57.13d |  |  |
| 54 | **Módulo Clientes** | 2008-12-15 → 2008-12-26 A (+11d) | 2008-12-22 → 2009-01-01 (+10d) | 10d → 8d | 0% → 72% | 0d → 51.12d |  |  |
| 55 | Clientes - Alta | 2008-12-15 → 2008-12-26 A (+11d) | 2008-12-16 → 2008-12-29 (+13d) |  | 0% → 90% | 0d → 56.52d |  |  |
| 56 | Clientes - Baja | 2008-12-16 → 2008-12-29 A (+13d) | 2008-12-17 → 2008-12-30 (+13d) |  | 0% → 90% | 0d → 54.72d |  |  |
| 57 | Clientes - Modificación | 2008-12-17 → 2008-12-30 A (+13d) | 2008-12-18 → 2008-12-31 (+13d) |  | 0% → 90% | 0d → 52.92d |  |  |
| 58 | Clientes - Consulta | 2008-12-18 → 2008-12-31 A (+13d) | 2008-12-19 → 2009-01-01 (+13d) |  | 0% → 90% | 0d → 51.12d |  |  |
| 59 | Clientes - Prueba Unitaria | 2008-12-19 → 2008-12-30 (+11d) | 2008-12-22 → 2008-12-31 (+9d) |  |  | 0d → 53.12d | 58 → 38 |  |
| 60 | **Módulo Proveedores** | 2008-12-22 → 2009-01-01 A (+10d) | 2008-12-29 → 2009-01-07 (+9d) | 10d → 8d | 0% → 72% | 0d → 45.36d |  |  |
| 61 | Proveedores - Alta | 2008-12-22 → 2009-01-01 A (+10d) | 2008-12-23 → 2009-01-02 (+10d) |  | 0% → 90% | 0d → 50.76d |  |  |
| 62 | Proveedores - Baja | 2008-12-23 → 2009-01-02 A (+10d) | 2008-12-24 → 2009-01-05 (+12d) |  | 0% → 90% | 0d → 48.96d |  |  |
| 63 | Proveedores - Modificación | 2008-12-24 → 2009-01-05 A (+12d) | 2008-12-25 → 2009-01-06 (+12d) |  | 0% → 90% | 0d → 47.16d |  |  |
| 64 | Proveedores - Consulta | 2008-12-25 → 2009-01-06 A (+12d) | 2008-12-26 → 2009-01-07 (+12d) |  | 0% → 90% | 0d → 45.36d |  |  |
| 65 | Proveedores - Prueba Unitaria | 2008-12-26 → 2009-01-05 (+10d) | 2008-12-29 → 2009-01-06 (+8d) |  |  | 0d → 47.36d | 64 → 39 |  |
| 66 | **Módulo Insumos** | 2008-12-29 → 2009-01-07 A (+9d) | 2009-01-05 → 2009-01-15 (+10d) | 10d → 11.75d | 0% → 72% | 0d → 36.9d |  |  |
| 67 | Insumos - Alta | 2008-12-29 → 2009-01-07 A (+9d) | 2008-12-30 → 2009-01-08 (+9d) |  | 0% → 90% | 0d → 43.3d |  |  |
| 68 | Insumos - Baja | 2008-12-30 → 2009-01-08 A (+9d) | 2008-12-31 → 2009-01-09 (+9d) |  | 0% → 90% | 0d → 41.5d |  |  |
| 69 | Insumos - Modificación | 2008-12-31 → 2009-01-09 A (+9d) | 2009-01-01 → 2009-01-12 (+11d) |  | 0% → 90% | 0d → 39.7d |  |  |
| 70 | Insumos - Consulta | 2009-01-01 → 2009-01-12 A (+11d) | 2009-01-02 → 2009-01-13 (+11d) |  | 0% → 90% | 0d → 37.9d |  |  |
| 71 | Insumos - Prueba Unitaria | 2009-01-02 → 2009-01-14 (+12d) | 2009-01-05 → 2009-01-15 (+10d) |  |  | 0d → 36.9d | 70 → 40 |  |
| 72 | **Módulo Seguridad** | 2009-01-05 → 2009-01-15 A (+10d) | 2009-01-26 → 2009-02-05 (+10d) | 30d → 29d? | 0% → 37% | 0d → 25.82d |  |  |
| 73 | **Submódulo Usuarios** | 2009-01-05 → 2009-01-15 A (+10d) | 2009-01-12 → 2009-01-21 (+9d) | 10d → 8d | 0% → 72% | 0d → 32.51d |  |  |

| ID | Task | Start | Finish | Duration | Complete | Total float | Predecessors | Other |
| --- | --- | --- | --- | --- | --- | --- | --- | --- |
| 74 | Usuarios - Alta | 2009-01-05 → 2009-01-15 A (+10d) | 2009-01-06 → 2009-01-16 (+10d) |  | 0% → 90% | 0d → 37.91d |  |  |
| 75 | Usuarios - Baja | 2009-01-06 → 2009-01-16 A (+10d) | 2009-01-07 → 2009-01-19 (+12d) |  | 0% → 90% | 0d → 36.11d |  |  |
| 76 | Usuarios - Modificación | 2009-01-07 → 2009-01-19 A (+12d) | 2009-01-08 → 2009-01-20 (+12d) |  | 0% → 90% | 0d → 34.31d |  |  |
| 77 | Usuarios - Consulta | 2009-01-08 → 2009-01-20 A (+12d) | 2009-01-09 → 2009-01-21 (+12d) |  | 0% → 90% | 0d → 32.51d |  |  |
| 78 | Usuarios - Prueba Unitaria | 2009-01-09 → 2009-01-19 (+10d) | 2009-01-12 → 2009-01-20 (+8d) |  |  | 0d → 34.51d | 77 → 42 |  |
| 79 | **Submódulo Perfiles** | 2009-01-12 → 2009-01-21 A (+9d) | 2009-01-19 → 2009-01-27 (+8d) | 10d → 7.75d | 0% → 44% | 0d → 29.07d |  |  |
| 80 | Perfiles - Alta | 2009-01-12 → 2009-01-21 A (+9d) | 2009-01-13 → 2009-01-22 (+9d) | 2d → 1.75d | 0% → 57% | 0d → 32.82d |  |  |
| 81 | Perfiles - Baja | 2009-01-13 → 2009-01-22 A (+9d) | 2009-01-14 → 2009-01-23 (+9d) | 2d → 1.75d | 0% → 57% | 0d → 31.57d |  |  |
| 82 | Perfiles - Modificación | 2009-01-14 → 2009-01-23 A (+9d) | 2009-01-15 → 2009-01-26 (+11d) | 2d → 1.75d | 0% → 57% | 0d → 30.32d |  |  |
| 83 | Perfiles - Consulta | 2009-01-15 → 2009-01-26 A (+11d) | 2009-01-16 → 2009-01-27 (+11d) | 2d → 1.75d | 0% → 57% | 0d → 29.07d |  |  |
| 84 | Perfiles - Prueba Unitaria | 2009-01-16 → 2009-01-23 (+7d) | 2009-01-19 → 2009-01-26 (+7d) |  |  | 0d → 30.82d | 83 → 43 |  |
| 85 | **Submódulo Gestión de Seguridad** | 2009-01-19 → 2009-01-27 (+8d) | 2009-01-26 → 2009-02-05 (+10d) | 10d → 13.25d? |  | 0d → 25.82d |  |  |
| 86 | Gestión Seguridad - Consulta | 2009-01-19 → 2009-01-27 (+8d) | 2009-01-21 → 2009-01-29 (+8d) |  |  | 0d → 29.07d |  |  |
| 87 | Gestión de Seguridad - Asignación a Perfiles | 2009-01-21 → 2009-01-29 (+8d) | 2009-01-26 → 2009-02-03 (+8d) |  |  | 0d → 29.07d |  |  |
| 89 | **Módulo Personal Técnico** | 2009-01-26 → 2009-02-05 A (+10d) | 2009-02-02 → 2009-02-11 (+9d) | 10d → 8d | 0% → 72% | 0d → 20.31d |  |  |
| 90 | Personal Técnico - Alta | 2009-01-26 → 2009-02-05 A (+10d) | 2009-01-27 → 2009-02-06 (+10d) |  | 0% → 90% | 0d → 25.71d |  |  |
| 91 | Personal Técnico - Baja | 2009-01-27 → 2009-02-06 A (+10d) | 2009-01-28 → 2009-02-09 (+12d) |  | 0% → 90% | 0d → 23.91d |  |  |
| 92 | Personal Técnico - Modificación | 2009-01-28 → 2009-02-09 A (+12d) | 2009-01-29 → 2009-02-10 (+12d) |  | 0% → 90% | 0d → 22.11d |  |  |
| 93 | Personal Técnico - Consulta | 2009-01-29 → 2009-02-10 A (+12d) | 2009-01-30 → 2009-02-11 (+12d) |  | 0% → 90% | 0d → 20.31d |  |  |
| 94 | Personal Técnico - Prueba Unitaria | 2009-01-30 → 2009-02-09 (+10d) | 2009-02-02 → 2009-02-10 (+8d) |  |  | 0d → 22.31d | 93 → 45 |  |
| 95 | **Módulo Gestión de Tickets** | 2009-02-02 → 2009-02-11 A (+9d) | 2009-03-03 → 2009-03-09 (+6d) | 42d → 36.25d | 0% → 8% | 0d → 17.58d |  |  |
| 96 | **Alta** | 2009-02-02 → 2009-02-11 A (+9d) | 2009-02-18 → 2009-02-27 (+9d) | 24d → 24.25d | 0% → 10% | 0d → 18.38d |  |  |
| 97 | Alta - Generación de Presupuesto | 2009-02-02 → 2009-02-11 A (+9d) | 2009-02-09 → 2009-02-18 (+9d) | 10d → 10.25d | 0% → 10% | 0d → 19.53d |  |  |
| 98 | Alta - Asignación a Técnico | 2009-02-09 → 2009-02-18 A (+9d) | 2009-02-11 → 2009-02-20 (+9d) |  | 0% → 10% | 0d → 19.38d |  |  |
| 99 | Alta - Asignación de Estados | 2009-02-11 → 2009-02-20 A (+9d) | 2009-02-18 → 2009-02-27 (+9d) | 10d → 10.25d | 0% → 10% | 0d → 18.38d |  |  |
| 100 | **Modificación** | 2009-02-18 → 2009-02-27 A (+9d) | 2009-02-24 → 2009-03-05 (+9d) |  | 0% → 10% | 0d → 17.83d |  |  |
| 101 | Modificación - Presupuesto | 2009-02-18 → 2009-02-27 A (+9d) | 2009-02-20 → 2009-03-03 (+11d) |  | 0% → 10% | 0d → 18.23d |  |  |
| 102 | Modificación - Asignación a Técnico | 2009-02-20 → 2009-03-03 A (+11d) | 2009-02-23 → 2009-03-04 (+9d) |  | 0% → 10% | 0d → 18.03d |  |  |
| 103 | Modificación - Estados | 2009-02-23 → 2009-03-04 A (+9d) | 2009-02-24 → 2009-03-05 (+9d) |  | 0% → 10% | 0d → 17.83d |  |  |
| 104 | Gestión de Tickets - Consulta | 2009-02-24 → 2009-03-05 (+9d) | 2009-02-26 → 2009-03-09 (+11d) |  |  | 0d → 17.83d |  |  |
| 105 | Gestión de Tickets - Prueba Unitaria | 2009-02-26 → 2009-03-04 (+6d) | 2009-03-03 → 2009-03-09 (+6d) |  |  | 0d → 17.58d | 104 → 46 |  |
| 106 | **Módulo Alertas** | 2009-03-03 → 2009-03-09 A (+6d) | 2009-03-20 → 2009-03-26 (+6d) | 26d → 26.25d | 0% → 68% |  |  |  |
| 107 | Módulo Alertas - Configuración | 2009-03-03 → 2009-03-09 A (+6d) | 2009-03-10 → 2009-03-16 (+6d) | 10d → 10.25d | 0% → 88% | 0d → 9d |  |  |
| 108 | Módulo Alertas - Proceso Batch | 2009-03-10 → 2009-03-16 A (+6d) | 2009-03-17 → 2009-03-23 (+6d) | 10d → 10.25d | 0% → 88% |  |  |  |
| 109 | Módulo Alertas - Prueba Unitaria | 2009-03-17 → 2009-03-23 (+6d) | 2009-03-20 → 2009-03-26 (+6d) |  |  |  |  |  |
| 110 | **Módulo Reportes** | 2009-03-20 → 2009-03-26 (+6d) | 2009-04-10 → 2009-04-09 (-1d) | 30d → 20d |  |  |  |  |
| 111 | Módulo Reportes - Desarrollo | 2009-03-20 → 2009-03-26 (+6d) | 2009-04-03 → 2009-04-09 (+6d) |  |  |  |  |  |
| 112 | Módulo Reportes - Prueba Unitaria | 2009-04-03 → 2009-03-26 (-8d) | 2009-04-10 → 2009-04-02 (-8d) |  |  | 0d → 10d | 111 → 47 |  |
| 113 | Integración | 2009-04-10 → 2009-04-09 (-1d) | 2009-04-17 → 2009-04-16 (-1d) |  |  |  |  |  |
| 114 | Pruebas de Integración | 2009-04-17 → 2009-04-16 (-1d) | 2009-05-01 → 2009-04-30 (-1d) |  |  | 0d → 15.33d |  |  |
| 122 | Implementación |  | 2009-05-06 → 2009-05-12 (+6d) | 6d → 13.33d |  |  | 114 → 121 | resources Analista 1; Analista 2; Analista 3; Analista 4; Lider Proyecto → Analista 1; Analista 2; Analista 3; Analista 4; Lider Proyecto [25%] |
